"Milestone Name","Description","Start Date","Due Date","Tasks","Open Tasks","Indicative Hours"
"M0 Project Setup and Governance","Team, tools, repository, environments, secrets, risk and communication set up so delivery can run smoothly.","2026-10-06","2026-10-16","10","8","46"
"M1 Discovery and Design","Use case, architecture, security design, agentic design (Verification Employee), UX and the interview instrument, all signed off.","2026-10-07","2026-11-09","20","13","185"
"M2 Foundation (Walking Skeleton)","The core platform: case state machine, audit ledger, Data Store, API, tool gateway, web app and deployment. Built and live in the development project.","2026-10-09","2026-10-12","12","0","112"
"M3 WhatsApp Channel","Interakt WhatsApp: templates, status receipts, inbound replies, free-text sends, plus the Meta Cloud API decision and channel hardening.","2026-10-10","2026-11-26","15","7","133"
"M4 Missions and Campaigns","Missions as versioned data, bulk first-message campaigns with pacing, caps and auto-pause.","2026-10-12","2026-11-11","8","3","58"
"M5 Agentic Core (Verification Employee)","The reusable AI employee: definition, context layers, tools master, guardrails, wake mechanism and an agent that decides the channel and next action per case.","2026-10-13","2026-12-21","20","20","346"
"M6 ZoLabs Voice Channel","ZoLabs as a tool the employee can choose: calls, consent script, questionnaire, results saved as evidence.","2026-10-13","2026-12-14","9","9","134"
"M7 Authentication, Tenancy and Roles","Sign-in with Google or Zoho, user management, per-client data isolation, platform versus client roles, scoped agent access.","2026-10-15","2026-11-30","8","8","124"
"M8 Admin UI: Employees, Missions, Reporting","Screens for employees (EdZola staff only), a mission builder, simulator, richer case view, review queue and reports.","2026-11-09","2026-12-24","10","10","228"
"M9 Scale, Data and Cost","Indexed queries, pagination, 10,000-person import and campaign, load tests, cost control, backups and retention.","2026-10-16","2026-12-24","10","10","138"
"M10 Security and Compliance","Threat model, prompt-injection testing, PII protection, penetration test, privacy and data-residency review, client agreements.","2026-11-02","2026-12-24","11","11","116"
"M11 Operations and Monitoring","Logging, alerts, dashboards, runbooks and support tooling so problems are seen and fixed fast.","2026-11-09","2026-12-09","6","6","61"
"M12 Quality Assurance","Test plan, automated and manual testing, agent evaluations, voice and Hindi testing, regression and triage.","2026-10-26","2026-12-28","9","9","130"
"M13 Pilot and UAT","UAT environment, signed-off questions, 25-case controlled pilot, training, defect fixing and formal sign-off.","2026-11-23","2027-01-08","11","11","163"
"M14 Production Readiness and Go-Live","Production environment, numbers, templates, hardening, release plan, smoke test and the first live campaign.","2026-12-08","2027-01-12","10","10","55"
"M15 Hypercare and Handover","Two weeks of close monitoring, documentation, knowledge transfer and project closure.","2026-12-21","2027-01-28","6","6","109"
"M16 Roadmap (After Go-Live)","Email, SMS, connectors, multi-agent, client self-service and new missions. Not in the first release.","2027-01-29","2027-02-15","8","8","290"
